| uid | wbsOrder | name | start | finish | notes | actualStart | actualFinish | percentComplete | milestone | dependencies |
| --- | --- | --- | --- | --- | --- | --- | --- | --- | --- | --- |
| 1 | 1 | CR-751(GRS JSON スキーマの自己説明)の適用 | 2026-10-15T02:00:00 | 2026-10-15T03:04:00 | 02:00 は土台 43b7315a、03:04 は dist の作り直し 102a8474。 | 2026-10-15T02:00:00 | 2026-10-15T03:04:00 | 100 |  |  |
| 50 | 2 | 試験待ち 6 行(DFC-2449〜2466)の仕様だけを読む試験の作成 | 2026-10-15T02:15:00 | 2026-10-15T02:32:00 | 9792e32f、合流 fb383e8f。 | 2026-10-15T02:15:00 | 2026-10-15T02:32:00 | 100 |  |  |
| 51 | 3 | 1 枚のチェックリスト(user-checklist-2026-10-15)の起草 | 2026-10-15T02:15:00 | 2026-10-15T02:41:00 | c5aef0cc・0262b17a、合流 a0dcc673。 | 2026-10-15T02:15:00 | 2026-10-15T02:41:00 | 100 |  |  |
| 52 | 4 | CR-740・752・753(覚え置き・呼び方・Ctrl の写し)の起草 | 2026-10-15T02:15:00 | 2026-10-15T03:40:00 | 06f8e4a9・f55e1f58、合流 e9d2a243。 | 2026-10-15T02:15:00 | 2026-10-15T03:40:00 | 100 |  |  |
| 53 | 5 | CR-758(依存線とマーカーの干渉解消)の起草 | 2026-10-15T02:15:00 | 2026-10-15T03:40:00 | 6201a739・d4c9a219、合流 bc632547。 | 2026-10-15T02:15:00 | 2026-10-15T03:40:00 | 100 |  |  |
| 3 | 6 | 表の窓の聞き取り(DFC-2600〜2615)の記録 | 2026-10-15T02:20:00 | 2026-10-15T03:53:00 | 4134b69f、合流 0d9fdb3f。 | 2026-10-15T02:20:00 | 2026-10-15T03:53:00 | 100 |  |  |
| 5 | 7 | 工程の強制の道具(push の見張り・検査 78〜80)の実装 | 2026-10-15T02:20:00 | 2026-10-15T04:13:00 | 076bd74c、合流 7c364713。push 済み 92015a29。 | 2026-10-15T02:20:00 | 2026-10-15T04:13:00 | 100 |  |  |
| 54 | 8 | CR-754〜757(設定パネル・タイムゾーン・ダミー実績・全体シフト)の起草 | 2026-10-15T02:20:00 | 2026-10-15T05:57:00 | d5eb0800 ほか、合流 a773ede9・6d81c750。 | 2026-10-15T02:20:00 | 2026-10-15T05:57:00 | 100 |  |  |
| 6 | 9 | JDG-2071(仕様書が正)の権威の調査 | 2026-10-15T02:40:00 | 2026-10-15T04:09:00 | bc3ee32d、合流 d60bdf78。 | 2026-10-15T02:40:00 | 2026-10-15T04:09:00 | 100 |  |  |
| 55 | 10 | 紹介頁(docs/about)のダーク切替の実装 | 2026-10-15T02:40:00 | 2026-10-15T04:05:00 | 8b7f8e54、合流 e092ae24。push 済み。 | 2026-10-15T02:40:00 | 2026-10-15T04:05:00 | 100 |  |  |
| 56 | 11 | プロジェクト計画(project-plan)の初版と直し | 2026-10-15T03:44:00 | 2026-10-15T05:09:00 | 初版 5b305da1 から吹き出しの直し 4a907919 まで。始まりはこの席の最初の測り。 | 2026-10-15T03:44:00 | 2026-10-15T05:09:00 | 100 |  |  |
| 4 | 12 | CR-753(Ctrl ドラッグの写しを移動と同じ所へ)の実装 | 2026-10-15T04:13:00 | 2026-10-15T05:53:00 | c76c7ee3、合流 bce31827。 | 2026-10-15T04:13:00 | 2026-10-15T05:53:00 | 100 |  |  |
| 8 | 13 | CR-752(公開名の呼び方と直す案の行の鍵)の仕様反映 | 2026-10-15T04:55:00 | 2026-10-15T06:15:00 | 9fec527e、合流 fc80c39b、台帳 66d989c6。 | 2026-10-15T04:55:00 | 2026-10-15T06:15:00 | 100 |  |  |
| 57 | 14 | STOP の印の仕分け(DFC-2647)の調べ | 2026-10-15T05:09:00 | 2026-10-15T05:36:00 | 75c38edf、合流 c77b5211。 | 2026-10-15T05:09:00 | 2026-10-15T05:36:00 | 100 |  |  |
| 33 | 15 | CR-759〜762(表の窓)の起草 | 2026-10-15T05:02:00 | 2026-10-15T07:08:00 | 03b7d3a8・5daf3df8、合流 65aac09f・d41292d1。 | 2026-10-15T05:02:00 | 2026-10-15T07:08:00 | 100 |  |  |
| 58 | 16 | CR-765〜768(仕様が正の原稿)の起草 | 2026-10-15T05:09:00 | 2026-10-15T06:07:00 | 04d5c89c・71a52294、合流 8e7f1419・8f6647f4。 | 2026-10-15T05:09:00 | 2026-10-15T06:07:00 | 100 |  |  |
| 60 | 17 | プロジェクト計画(project-plan)の更新と前の計画の重ね | 2026-10-15T07:12:00 | 2026-10-15T07:36:00 | 777750c3・c6110109、合流 423bd94b・d8feb1c0。 | 2026-10-15T07:12:00 | 2026-10-15T07:36:00 | 100 |  |  |
| 80 | 18 | CR-763/764(飛び先のマーカーほか)の起草の仕上げ | 2026-10-15T03:53:00 | 2026-10-15T07:30:00 | fedf4b3a、合流 7cd862bb。 | 2026-10-15T03:53:00 | 2026-10-15T07:30:00 | 100 |  |  |
| 7 | 19 | CR-740(範囲選択中の下の絵の覚え置き)の実装 | 2026-10-15T04:13:00 | 2026-10-15T07:21:00 | f2104be6 から、合流の後の基準値 f412a5e6 まで。 | 2026-10-15T04:13:00 | 2026-10-15T07:21:00 | 100 |  |  |
| 9 | 20 | CR-758(依存線とマーカーの干渉解消)の実装 | 2026-10-15T04:13:00 | 2026-10-15T07:58:00 | 合流 f6796d70、試験の結び 786a7b52。 | 2026-10-15T04:13:00 | 2026-10-15T07:58:00 | 100 |  |  |
| 23 | 21 | CR-757(全体日程のシフト)の実装 | 2026-10-15T05:58:00 | 2026-10-15T07:59:00 | ac41487f・dac985e9、合流 a43ebb9e。 | 2026-10-15T05:58:00 | 2026-10-15T07:59:00 | 100 |  |  |
| 61 | 22 | CR-769〜771(英語の慣習)の調べ | 2026-10-15T06:15:00 | 2026-10-15T07:54:00 | 合流 836723b2。 | 2026-10-15T06:15:00 | 2026-10-15T07:54:00 | 100 |  |  |
| 90 | 23 | CR-769〜771(英語の慣習)の起草と答えの記録 | 2026-10-15T07:54:00 | 2026-10-15T08:25:00 | 3eca47e4(JDG-2245〜2251)。 | 2026-10-15T07:54:00 | 2026-10-15T08:25:00 | 100 |  |  |
| 22 | 24 | CR-756(分単位のダミー実績)の実装 | 2026-10-15T08:09:00 | 2026-10-15T11:04:00 | 78f21a2b から、合流 cc5f6a9b。 | 2026-10-15T08:09:00 | 2026-10-15T11:04:00 | 100 |  |  |
| 21 | 25 | CR-755(タイムゾーンの固定の時差と略称)の実装 | 2026-10-15T08:09:00 | 2026-10-15T11:04:00 | c775ad8c から、合流 cc5f6a9b。 | 2026-10-15T08:09:00 | 2026-10-15T11:04:00 | 100 |  |  |
| 65 | 26 | CR-762(列の境目を引く幅の追従)の実装 | 2026-10-15T08:25:00 | 2026-10-15T11:04:00 | ac70da58 から、合流 cc5f6a9b。 | 2026-10-15T08:25:00 | 2026-10-15T11:04:00 | 100 |  |  |
| 72 | 27 | CR-761(列のフィルタの一覧)の実装 | 2026-10-15T08:46:00 | 2026-10-15T11:04:00 | 408d8b6b から、合流 cc5f6a9b。 | 2026-10-15T08:46:00 | 2026-10-15T11:04:00 | 100 |  |  |
| 119 | 28 | DFC-2765(変更前の輪郭が日に丸まる)の直し | 2026-10-15T08:25:00 | 2026-10-15T11:04:00 | 276c4ed7、合流 cc5f6a9b。 | 2026-10-15T08:25:00 | 2026-10-15T11:04:00 | 100 |  |  |
| 81 | 29 | CR-763(飛び先の輪のバラ色と角丸)の実装 | 2026-10-15T08:25:00 | 2026-10-15T11:04:00 | 81c43dd3 から、合流 cc5f6a9b。 | 2026-10-15T08:25:00 | 2026-10-15T11:04:00 | 100 |  |  |
| 67 | 30 | CR-759(修正案の表の語と推奨の一括採用)の実装 | 2026-10-15T08:25:00 | 2026-10-15T11:05:00 | 3c092e7b から、dist 1b4d2119。 | 2026-10-15T08:25:00 | 2026-10-15T11:05:00 | 100 |  |  |
| 69 | 31 | CR-760(表のステータスと種別の列)の実装 | 2026-10-15T08:25:00 | 2026-10-15T11:05:00 | 945331cb から、dist 1b4d2119。 | 2026-10-15T08:25:00 | 2026-10-15T11:05:00 | 100 |  |  |
| 120 | 32 | CR-764(診断マーカーを押すとレポートの行)の実装 | 2026-10-15T11:05:00 | 2026-10-15T13:04:00 | 合流 e68a78e5。 | 2026-10-15T11:05:00 | 2026-10-15T13:04:00 | 100 |  |  |
| 78 | 33 | CR-765(Agent API の呼び方の原稿)の実装 | 2026-10-15T11:05:00 | 2026-10-15T13:24:00 | 45290213、試験の合流 c0822e59。 | 2026-10-15T11:05:00 | 2026-10-15T13:24:00 | 100 |  |  |
| 88 | 34 | CR-768(保存の媒体の型)の A・B の実装 | 2026-10-15T12:19:00 | 2026-10-15T13:26:00 | 2502b5ec、試験の合流 4e9b9d9c。 | 2026-10-15T12:19:00 | 2026-10-15T13:26:00 | 100 |  |  |
| 25 | 35 | CR-754(日付の欄と設定パネル)の実装 | 2026-10-15T10:28:00 | 2026-10-15T13:55:00 | e8ce940f・233836a9、合流 1b437554。 | 2026-10-15T10:28:00 | 2026-10-15T13:55:00 | 100 |  |  |
| 83 | 36 | CR-766(文書の命令が運ぶ値の原稿)の実装 | 2026-10-15T12:19:00 | 2026-10-15T14:34:00 | de04c75b から、試験の合流 b4083756。 | 2026-10-15T12:19:00 | 2026-10-15T14:34:00 | 100 |  |  |
| 91 | 37 | CR-769(保存する名と連携の名の英語)の実装 | 2026-10-15T14:37:00 | 2026-10-15T16:06:00 | dc055615、合流 84daf515、古い試験の直し b8937413。 | 2026-10-15T14:37:00 | 2026-10-15T16:06:00 | 100 |  |  |
| 121 | 38 | CR-770(画面の英語の語)の実装 | 2026-10-15T15:44:00 | 2026-10-15T17:23:00 | 52ec9b9e、合流 b8fe0d50。 | 2026-10-15T15:44:00 | 2026-10-15T17:23:00 | 100 |  |  |
| 122 | 39 | DFC-2309(開けないファイルの通知)の直し | 2026-10-15T16:06:00 | 2026-10-15T17:20:00 | 27a4717a・f6049838、合流 ffa4a112。 | 2026-10-15T16:06:00 | 2026-10-15T17:20:00 | 100 |  |  |
| 98 | 40 | CR-771(コードの公開名と配る物の名)の実装 | 2026-10-15T17:23:00 | 2026-10-15T23:57:00 | 合流 3337922a。 | 2026-10-15T17:23:00 | 2026-10-15T23:57:00 | 100 |  |  |
| 97 | 41 | 裁定待ち 約 15 問(CR-754・759〜770・DFC-2880)への答え | 2026-10-15T22:30:00 | 2026-10-16T00:03:00 | 答えの記録 JDG-2320・2330・2340・2350〜2352・2360〜2364・2370〜2374 の合流まで。始まりは測れないので前の計画の予定 22:30 を置いた。 | 2026-10-15T22:30:00 | 2026-10-16T00:03:00 | 100 |  |  |
| 123 | 42 | 紹介頁(docs/about)の表紙の .md の仕様へのリンクと見本 | 2026-10-15T17:23:00 | 2026-10-15T23:57:00 | ec04868b、合流 da4a50cd。 | 2026-10-15T17:23:00 | 2026-10-15T23:57:00 | 100 |  |  |
| 112 | 43 | DFC-2880(出荷見本が開けない)の直し | 2026-10-15T17:23:00 | 2026-10-15T23:57:00 | JDG-2370〜2374 の記録 5cbf2fc9、合流 bdee0bc0。台帳は実測待ち。 | 2026-10-15T17:23:00 | 2026-10-15T23:57:00 | 100 |  |  |
| 103 | 44 | CR-773(利用者が答えた 6 つの裁定)の実装 | 2026-10-16T00:01:00 | 2026-10-16T00:46:00 | 合流 b17d0498。前の計画の「裁定のあとの小さな直し」。 | 2026-10-16T00:01:00 | 2026-10-16T00:46:00 | 100 |  |  |
| 124 | 45 | CR-772(タスクグループを 1 回のドラッグで)の実装 | 2026-10-16T00:01:00 | 2026-10-16T03:52:00 | 合流 0ed0c093、試験 a3e56a4a、型の直し 96cb8168。 | 2026-10-16T00:01:00 | 2026-10-16T03:52:00 | 100 |  |  |
| 100 | 46 | dist の作り直し | 2026-10-16T01:22:00 | 2026-10-16T01:44:00 | edaa57b4。 | 2026-10-16T01:22:00 | 2026-10-16T01:44:00 | 100 |  |  |
| 125 | 47 | CR-774(深さの上限で問う)の起草と仕様の段 | 2026-10-16T03:57:00 | 2026-10-16T04:42:00 | 36c8e3d2・12ba27fa(枝 claude/keen-swartz-459eef、統合の枝へはまだ)。 | 2026-10-16T03:57:00 | 2026-10-16T04:42:00 | 100 |  |  |
| 101 | 48 | 作業木の GT-2(MSPDI のスキーマを写して) | 2026-10-16T03:57:00 | 2026-10-16T05:00:00 | 通った(引継書 99024c86)。始まりは 6fbb69fe の時刻。 | 2026-10-16T03:57:00 | 2026-10-16T05:00:00 | 100 |  |  |
| 130 | 49 | CR-774(深さの上限で問う)の仕様の段の合流 | 2026-10-16T04:42:00 | 2026-10-16T05:10:00 | d75bc777(integ/coord-1016)。 | 2026-10-16T04:42:00 | 2026-10-16T05:10:00 | 100 |  |  |
| 38 | 50 | OneDrive を止める(利用者に頼む) | 2026-10-16T06:45:00 | 2026-10-16T06:45:00 | JDG-2086。性能の試験の前。 |  |  | 0 | True |  |
| 39 | 51 | 根の一括の GT-2(gate-queue の drain) | 2026-10-16T05:30:00 | 2026-10-16T06:30:00 | 05:00 から動いている。残りを 1 時間で置いた。 |  |  | 0 |  |  |
| 40 | 52 | refactor と main へ push | 2026-10-16T06:30:00 | 2026-10-16T06:30:00 |  |  |  | 0 | True |  |
| 102 | 53 | Pages の配備 | 2026-10-16T06:30:00 | 2026-10-16T07:00:00 |  |  |  | 0 |  | 40 1 0 7 |
| 128 | 54 | 完了確認の残り 6 席の片付け | 2026-10-16T05:30:00 | 2026-10-16T06:00:00 |  |  |  | 0 |  |  |
| 131 | 55 | CR-774(深さの上限で問う)の実装 | 2026-10-16T05:30:00 | 2026-10-16T10:00:00 | 最優先(利用者 2026-10-16)。05:30〜10:00。 |  |  | 0 |  |  |
| 132 | 56 | CR-774(深さの上限で問う)の仕様だけを読む試験 | 2026-10-16T05:30:00 | 2026-10-16T10:00:00 | 05:30〜10:00。5.2 節の 8 項目。 |  |  | 0 |  |  |
| 138 | 57 | 紹介頁(docs/about)のタブ 05「拡張の試し」・@pure の注・DFC-2890/2891 | 2026-10-16T05:30:00 | 2026-10-16T10:00:00 | 最優先(利用者 2026-10-16)。05:30〜10:00。 |  |  | 0 |  |  |
| 133 | 58 | CR-774(深さの上限で問う)と紹介頁の合流 | 2026-10-16T10:00:00 | 2026-10-16T10:30:00 | 10:00〜。 |  |  | 0 |  | 131 1 0 7, 132 1 0 7, 138 1 0 7 |
| 142 | 59 | 型の検査(tsc) | 2026-10-16T10:30:00 | 2026-10-16T10:45:00 |  |  |  | 0 |  |  |
| 143 | 60 | CR-774(深さの上限で問う)と紹介頁の入った先端の GT-2 | 2026-10-16T10:45:00 | 2026-10-16T12:00:00 |  |  |  | 0 |  |  |
| 129 | 61 | 性能の試験(PERF、GRS_PERF=1) | 2026-10-16T12:00:00 | 2026-10-16T13:00:00 | CR-774 の後へ移した(利用者 2026-10-16)。赤のときだけ利用者を呼ぶ(JDG-605)。 |  |  | 0 |  | 38 1 0 7 |
| 144 | 62 | CR-774(深さの上限で問う)と紹介頁の push | 2026-10-16T13:00:00 | 2026-10-16T13:00:00 |  |  |  | 0 | True |  |
| 145 | 63 | CR-774(深さの上限で問う)と紹介頁の Pages の配備 | 2026-10-16T13:00:00 | 2026-10-16T13:30:00 |  |  |  | 0 |  | 144 1 0 7 |
| 127 | 64 | CR-774(深さの上限で問う)と紹介頁を見て tier B を選ぶ | 2026-10-16T21:00:00 | 2026-10-16T22:00:00 | 金 21:00 から(利用者の時間帯)。3〜6 件。 |  |  | 0 |  | 145 1 0 7 |
| 146 | 65 | JDG-2340(飛び先の輪の色)の直し | 2026-10-16T22:00:00 | 2026-10-17T00:00:00 | tier B の候補。大きさ S。 |  |  | 0 |  | 127 1 0 7 |
| 107 | 66 | JDG-2361(命令の値 19 の名を列の名へ)の新しい CR の実装 | 2026-10-17T00:00:00 | 2026-10-17T01:30:00 | tier B の候補。約 3 時間 x 0.5。 |  |  | 0 |  |  |
| 135 | 67 | DFC-2912(箱を引いて離しても変わらない操作)の調べと直し | 2026-10-16T22:00:00 | 2026-10-17T00:00:00 | tier B の候補。大きさ S。 |  |  | 0 |  | 127 1 0 7 |
| 137 | 68 | DFC-2700〜2702(CR-753 の残りの 3 点)の直し | 2026-10-17T00:00:00 | 2026-10-17T04:00:00 | tier B の候補。大きさ M。 |  |  | 0 |  |  |
| 110 | 69 | DFC-2856(形の外れた命令の束を断る)の実装 | 2026-10-16T22:00:00 | 2026-10-17T02:00:00 | tier B の候補。大きさ M。 |  |  | 0 |  | 127 1 0 7 |
| 136 | 70 | DFC-2903(PI-39 の消えた型)の直し | 2026-10-17T02:00:00 | 2026-10-17T04:00:00 | tier B の候補。大きさ S。 |  |  | 0 |  |  |

| uid | wbsOrder | name | start | finish | notes | percentComplete | milestone | dependencies |
| --- | --- | --- | --- | --- | --- | --- | --- | --- |
| 113 | 71 | DFC-557(MSPDI の拒否が黙る)の直し | 2026-10-16T22:00:00 | 2026-10-17T02:00:00 | tier B の候補。大きさ M。 | 0 |  | 127 1 0 7 |
| 114 | 72 | DFC-2870(実績期間の欄の幅)の直し | 2026-10-17T02:00:00 | 2026-10-17T04:00:00 | tier B の候補。大きさ S。 | 0 |  |  |
| 43 | 73 | tier B の入った先端の GT-2 と push・Pages | 2026-10-17T04:00:00 | 2026-10-17T06:00:00 |  | 0 |  |  |
| 37 | 74 | 1 枚のチェックリスト(user-checklist)の刷り直し | 2026-10-17T06:00:00 | 2026-10-17T07:00:00 |  | 0 |  |  |
| 41 | 75 | 1 枚のチェックリストを実物で触る | 2026-10-17T09:00:00 | 2026-10-17T11:00:00 | 土の利用者の時間帯(09:00〜23:00)。 | 0 |  | 37 1 0 7 |
| 42 | 76 | チェックリストで出た直しの実装 | 2026-10-17T11:00:00 | 2026-10-17T15:00:00 | 日 18:00 まで。仮置き。大きさ M。 | 0 |  | 41 1 0 7 |
| 139 | 77 | 最後の GT-2 と push・予備 | 2026-10-18T18:00:00 | 2026-10-18T23:00:00 | 日 18:00〜23:00。 | 0 |  | 42 1 0 7 |
| 140 | 78 | α 版(10/19)のお披露目 | 2026-10-19T09:00:00 | 2026-10-19T09:00:00 | 月 09:00。月の夕方から水 19:00 までは休み(週の使用量の戻りを待つ)。 | 0 | True | 139 1 0 7 |
| 147 | 79 | 週の使用量の戻り(水 19:00)と仕事の再開 | 2026-10-21T19:00:00 | 2026-10-21T19:00:00 | 利用者 2026-10-16: 月の夕方から水 19:00 まで仕事をしない。 | 0 | True | 140 1 0 7 |
| 85 | 80 | CR-767(状態機械の原稿)の波 1 の実装 | 2026-10-21T19:00:00 | 2026-10-22T00:30:00 | tier C。JDG-2362〜2364。22 時間を波 1・2 に半分ずつ、x 0.5。 | 0 |  | 147 1 0 7 |
| 86 | 81 | CR-767(状態機械の原稿)の波 2 の実装 | 2026-10-22T00:30:00 | 2026-10-22T06:00:00 | tier C。 | 0 |  |  |
| 87 | 82 | CR-767(状態機械の原稿)の合流と確かめ | 2026-10-22T06:00:00 | 2026-10-22T06:30:00 |  | 0 |  | 86 1 0 7 |
| 104 | 83 | CR-768(保存の媒体の型)の C と CM-27 の注の実装 | 2026-10-22T06:30:00 | 2026-10-22T10:30:00 | tier C。大きさ M。 | 0 |  | 87 1 0 7 |
| 105 | 84 | CR-768(保存の媒体の型)の C の合流と確かめ | 2026-10-22T10:30:00 | 2026-10-22T11:00:00 |  | 0 |  | 104 1 0 7 |
| 134 | 85 | DFC-2911(コメントボックスの先端の吸い付き)の実装 | 2026-10-21T19:00:00 | 2026-10-22T03:00:00 | tier C。大きさ L。 | 0 |  | 147 1 0 7 |
| 15 | 86 | T-064(公開の名 約 479 の呼び出し形, DFC-2640)の書き起こしと再検討 | 2026-10-21T19:00:00 | 2026-10-22T07:00:00 | tier C。 | 0 |  | 147 1 0 7 |
| 77 | 87 | 古い STOP の印 16 件の除去 | 2026-10-22T07:00:00 | 2026-10-22T11:00:00 | 大きさ M。 | 0 |  |  |
| 115 | 88 | edgeOf(重複した関数)の 1 つへの寄せ | 2026-10-21T19:00:00 | 2026-10-21T21:00:00 | 大きさ S。 | 0 |  | 147 1 0 7 |
| 116 | 89 | NOT_STORED_DUMMY_SIZES(手で持つ寸法)の生成への置き換え | 2026-10-21T21:00:00 | 2026-10-21T23:00:00 | 大きさ S。 | 0 |  |  |
| 117 | 90 | baseChangeCommandOf(名の複数形)の言い直し | 2026-10-21T23:00:00 | 2026-10-22T01:00:00 | 大きさ S。 | 0 |  |  |
| 118 | 91 | DFC-2646〜2648(STOP の仕分けで出た 3 行)の直し | 2026-10-22T03:00:00 | 2026-10-22T07:00:00 | 大きさ M。 | 0 |  |  |
| 11 | 92 | 未検討 約 45 行(DFC-611・2560〜2569・2690〜2699 ほか)のトリアージ | 2026-10-22T07:00:00 | 2026-10-22T11:00:00 | 台帳の提案だけ。大きさ M。 | 0 |  |  |
| 32 | 93 | トリアージで出た直しの実装 | 2026-10-22T11:00:00 | 2026-10-22T19:00:00 | 仮置き。大きさ L。 | 0 |  |  |
| 18 | 94 | 仕様待ちの残り(DFC-560・631・1063〜1073 ほか)の CR の起草 | 2026-10-21T19:00:00 | 2026-10-21T23:00:00 | 大きさ M。 | 0 |  | 147 1 0 7 |
| 35 | 95 | 仕様待ちの残りの CR の実装 | 2026-10-21T23:00:00 | 2026-10-22T07:00:00 | 大きさ L。 | 0 |  |  |
| 12 | 96 | 罠の束(DFC-544・547・548・549)の実装 | 2026-10-22T11:00:00 | 2026-10-22T15:00:00 | 大きさ M。 | 0 |  |  |
| 20 | 97 | 実装待ちの残り(DFC-464・532〜562 ほか)の実装 | 2026-10-22T15:00:00 | 2026-10-22T23:00:00 | 大きさ L。 | 0 |  |  |
| 19 | 98 | DFC-730(GP-1)の実装 | 2026-10-22T07:00:00 | 2026-10-22T09:00:00 | 大きさ S。 | 0 |  |  |
| 17 | 99 | 試験待ち 11 行(DFC-550・567・641 ほか)の仕様だけを読む試験 | 2026-10-22T01:00:00 | 2026-10-22T05:00:00 | 大きさ M。 | 0 |  |  |
| 13 | 100 | 用語集の JSON 化(DFC-2175)の仕様と実装 | 2026-10-22T05:00:00 | 2026-10-22T09:00:00 | 大きさ M。 | 0 |  |  |
| 36 | 101 | 全部の合流と台帳の締め | 2026-10-22T23:00:00 | 2026-10-23T00:00:00 | 非 AI の直しが全部入ったことを台帳で数える。 | 0 |  |  |
| 141 | 102 | tier C の入った一括の GT-2 と push | 2026-10-23T00:00:00 | 2026-10-23T02:00:00 |  | 0 |  |  |
| 27 | 103 | W4(アダプタ層の分割)の前半 CR-578→579→580 の実装 | 2026-10-23T02:00:00 | 2026-10-23T10:00:00 | 大きさ L。 | 0 |  | 141 1 0 7 |
| 28 | 104 | W4 の後半(CR-581 の後半と properties-panel)の実装 | 2026-10-23T10:00:00 | 2026-10-23T18:00:00 | 大きさ L。 | 0 |  |  |
| 29 | 105 | W5(異常系 DFC-586 ほか)の仕様 | 2026-10-23T18:00:00 | 2026-10-24T02:00:00 | JDG-1479 により W4 の後。大きさ L。 | 0 |  |  |
| 30 | 106 | W5(異常系 DFC-922 ほか)の実装と試験 | 2026-10-24T02:00:00 | 2026-10-24T10:00:00 | 大きさ L。 | 0 |  |  |
| 31 | 107 | W4・W5 の合流と GT-2・push | 2026-10-24T10:00:00 | 2026-10-24T12:00:00 |  | 0 |  | 30 1 0 7 |
| 45 | 108 | CR-695(対話欄の廃止)の実装 | 2026-10-23T02:00:00 | 2026-10-23T10:00:00 | 大きさ L。 | 0 |  | 141 1 0 7 |
| 46 | 109 | CR-697(取次が口と鍵を覚える)の実装 | 2026-10-23T02:00:00 | 2026-10-23T10:00:00 | 大きさ L。 | 0 |  | 141 1 0 7 |
| 47 | 110 | DFC-2214・2215(AM-19 の説明)の仕様と実装 | 2026-10-23T02:00:00 | 2026-10-23T06:00:00 | 大きさ M。 | 0 |  | 141 1 0 7 |
| 44 | 111 | 正式公開の判断(JDG-1740) | 2026-10-24T12:00:00 | 2026-10-24T12:00:00 | 解明・リファクタ(W4・W5)・分刻みの日程が終わったことを確かめる。AI 連携は待たない。 | 0 | True | 31 1 0 7 |
| 48 | 112 | AI 連携の合流と GT-2・push | 2026-10-24T12:00:00 | 2026-10-24T14:00:00 |  | 0 |  | 45 1 0 7, 46 1 0 7, 47 1 0 7 |
| 49 | 113 | 計画の終わり | 2026-10-24T14:00:00 | 2026-10-24T14:00:00 |  | 0 | True | 44 1 0 7 |
